# Linha de injeção e pintura de para-choques

How a schedule from MS Project XML changed from version to version. A marks actual dates.

## Version 1 (data date 2026-11-13, saved 2026-11-22, file cronograma_G7.xml)

Note of the change: Arquivos de importação: backlog para o Jira (D7) e cronograma para o ProjectLibre (D4), com instruções

| ID | WBS | Task | Duration | Start | Predecessors |
| --- | --- | --- | --- | --- | --- |
| 1 | 1.1 | **1.1 Engenharia e licenças** |  |  |  |
| 2 | 1.1.1 | **1.1.1 Projeto básico** |  |  |  |
| 3 |  | A01 Elaborar o projeto básico e o layout da linha | 21d | 2026-02-02 |  |
| 4 | 1.1.2 | **1.1.2 Projetos executivos** |  |  |  |
| 5 |  | A02 Elaborar o projeto executivo civil e de utilidades | 27d | 2026-02-02 | 3 |
| 6 |  | A03 Elaborar o projeto executivo elétrico e de automação | 29d | 2026-02-02 | 3 |
| 7 |  | A04 Compatibilizar os projetos e emitir para construção | 7d | 2026-02-02 | 5, 6 |
| 8 | 1.1.3 | **1.1.3 Licenças** |  |  |  |
| 9 |  | A05 Obter as licenças e aprovações (ambiental e bombeiros) | 51d | 2026-02-02 | 3SS+10d |
| 10 |  | A06 Realizar a análise de risco NR-12 do projeto | 14d | 2026-02-02 | 6SS+12d |
| 11 | 1.2 | **1.2 Equipamentos principais** |  |  |  |
| 12 | 1.2.1 | **1.2.1 Injetora de 3.200 t** |  |  |  |
| 13 |  | A07 Elaborar a especificação técnica: Injetora de 3.200 t | 9d | 2026-02-02 | 3 |
| 14 |  | A08 Contratar o fornecimento: Injetora de 3.200 t | 8d | 2026-02-02 | 13 |
| 15 |  | A09 Fabricar: Injetora de 3.200 t | 122d | 2026-02-02 | 14 |
| 16 |  | A10 Aprovar os desenhos de fabricação e de bases: Injetora de 3.200 t | 11d | 2026-02-02 | 14 |
| 17 |  | A11 Realizar o teste de aceite em fábrica (FAT): Injetora de 3.200 t | 6d | 2026-02-02 | 15 |
| 18 |  | A12 Transportar e desembaraçar: Injetora de 3.200 t | 28d | 2026-02-02 | 17 |
| 19 |  | A13 Receber e inspecionar na fábrica: Injetora de 3.200 t | 4d | 2026-02-02 | 18 |
| 20 | 1.2.2 | **1.2.2 Cabine de pintura robotizada** |  |  |  |
| 21 |  | A14 Elaborar a especificação técnica: Cabine de pintura robotizada | 11d | 2026-02-02 | 3 |
| 22 |  | A15 Contratar o fornecimento: Cabine de pintura robotizada | 9d | 2026-02-02 | 21 |
| 23 |  | A16 Fabricar: Cabine de pintura robotizada | 108d | 2026-02-02 | 22 |
| 24 |  | A17 Aprovar os desenhos de fabricação e de bases: Cabine de pintura robotizada | 11d | 2026-02-02 | 22 |
| 25 |  | A18 Realizar o teste de aceite em fábrica (FAT): Cabine de pintura robotizada | 6d | 2026-02-02 | 23 |
| 26 |  | A19 Transportar e descarregar: Cabine de pintura robotizada | 9d | 2026-02-02 | 25 |
| 27 |  | A20 Receber e inspecionar na fábrica: Cabine de pintura robotizada | 4d | 2026-02-02 | 26 |
| 28 | 1.2.3 | **1.2.3 Transportador aéreo e robôs de manipulação** |  |  |  |
| 29 |  | A21 Especificar e contratar: Transportador aéreo e robôs de manipulação | 19d | 2026-02-02 | 3FS+5d |
| 30 |  | A22 Fabricar e entregar: Transportador aéreo e robôs de manipulação | 80d | 2026-02-02 | 29 |
| 31 |  | A23 Receber e inspecionar na fábrica: Transportador aéreo e robôs de manipulação | 4d | 2026-02-02 | 30 |
| 32 | 1.3 | **1.3 Obra civil e utilidades** |  |  |  |
| 33 | 1.3.1 | **1.3.1 Preparação da área** |  |  |  |
| 34 |  | A24 Mobilizar o canteiro e isolar a área em relação à Linha de painéis | 9d | 2026-02-02 | 7, 9SS+25d |
| 35 | 1.3.2 | **1.3.2 Bases e piso** |  |  |  |
| 36 |  | A25 Demolir o piso existente e escavar as bases | 11d | 2026-02-02 | 34 |
| 37 |  | A26 Executar as bases dos equipamentos | 21d | 2026-02-02 | 36, 16, 24 |
| 38 |  | A27 Executar o piso industrial e as canaletas | 23d | 2026-02-02 | 37 |
| 39 | 1.3.3 | **1.3.3 Utilidades** |  |  |  |
| 40 |  | A28 Instalar as redes de utilidades: água gelada, ar comprimido e tratamento de efluentes | 38d | 2026-02-02 | 36SS+10d |
| 41 |  | A29 Testar e liberar as redes de utilidades | 6d | 2026-02-02 | 40 |
| 42 | 1.3.4 | **1.3.4 Adequação predial** |  |  |  |
| 43 |  | A30 Adequar o prédio (cobertura, exaustão e iluminação) | 26d | 2026-02-02 | 36SS+5d |
| 44 |  | A31 Instalar a rede de combate a incêndio da área | 16d | 2026-02-02 | 43SS+8d |
| 45 | 1.4 | **1.4 Elétrica e automação** |  |  |  |
| 46 | 1.4.1 | **1.4.1 Força** |  |  |  |
| 47 |  | A32 Fabricar e instalar os painéis de força e a subestação | 42d | 2026-02-02 | 7 |
| 48 |  | A33 Instalar a infraestrutura elétrica e lançar os cabos | 29d | 2026-02-02 | 38, 47SS+15d |
| 49 |  | A34 Energizar os painéis e testar a alimentação | 5d | 2026-02-02 | 47, 48 |
| 50 | 1.4.2 | **1.4.2 Automação de campo** |  |  |  |
| 51 |  | A35 Instalar a instrumentação e a rede industrial | 28d | 2026-02-02 | 48SS+10d |
| 52 |  | A36 Programar os CLPs e o supervisório | 42d | 2026-02-02 | 6FS+10d |
| 53 |  | A37 Testar a lógica dos CLPs em bancada | 9d | 2026-02-02 | 52 |
| 54 | 1.5 | **1.5 Montagem** |  |  |  |
| 55 | 1.5.1 | **1.5.1 Montagem mecânica** |  |  |  |
| 56 |  | A38 Montar: Injetora de 3.200 t | 27d | 2026-02-02 | 19, 38 |
| 57 |  | A39 Montar: Cabine de pintura robotizada | 24d | 2026-02-02 | 27, 38 |
| 58 |  | A40 Montar e interligar: Transportador aéreo e robôs de manipulação | 20d | 2026-02-02 | 31, 56SS+8d, 57SS+8d |
| 59 |  | A41 Alinhar e nivelar os equipamentos | 7d | 2026-02-02 | 56, 57 |
| 60 | 1.5.2 | **1.5.2 Interligações e segurança** |  |  |  |
| 61 |  | A42 Interligar eletricamente os equipamentos | 16d | 2026-02-02 | 49, 56, 57 |
| 62 |  | A43 Instalar as proteções e adequar a linha à NR-12 | 13d | 2026-02-02 | 58, 59, 10 |
| 63 |  | A44 Emitir o laudo de conformidade com a NR-12 | 6d | 2026-02-02 | 62 |
| 64 | 1.6 | **1.6 Comissionamento e partida** |  |  |  |
| 65 | 1.6.1 | **1.6.1 Testes** |  |  |  |
| 66 |  | A45 Elaborar os procedimentos de comissionamento e partida | 11d | 2026-02-02 | 6FS+15d |
| 67 |  | A46 Executar os testes a frio (sem produto) | 14d | 2026-02-02 | 61, 63, 51, 53, 41, 44, 66 |
| 68 |  | A47 Executar o teste de aceite em campo (SAT) com produto | 11d | 2026-02-02 | 67, 87 |
| 69 | 1.6.2 | **1.6.2 Partida** |  |  |  |
| 70 |  | A48 Corrigir as pendências do teste de aceite | 9d | 2026-02-02 | 68 |

| ID | WBS | Task | Duration | Start | Predecessors |
| --- | --- | --- | --- | --- | --- |
| 71 |  | A49 Conduzir a partida assistida e a curva de ramp-up | 22d | 2026-02-02 | 68, 78, 77 |
| 72 | 1.7 | **1.7 Pessoas e transição** |  |  |  |
| 73 | 1.7.1 | **1.7.1 Pessoas** |  |  |  |
| 74 |  | A50 Recrutar e contratar os operadores da nova linha | 31d | 2026-02-02 | 3FS+40d |
| 75 | 1.7.2 | **1.7.2 Treinamento** |  |  |  |
| 76 |  | A51 Elaborar o plano de treinamento e os materiais | 16d | 2026-02-02 | 6SS+20d |
| 77 |  | A52 Elaborar os procedimentos operacionais padrão | 16d | 2026-02-02 | 76 |
| 78 |  | A53 Treinar os operadores e a equipe de manutenção | 16d | 2026-02-02 | 76, 58, 74 |
| 79 | 1.7.3 | **1.7.3 Encerramento** |  |  |  |
| 80 |  | A54 Organizar os sobressalentes, os planos de manutenção e o data book | 16d | 2026-02-02 | 67SS |
| 81 |  | A55 Registrar as lições aprendidas e desmobilizar o canteiro | 7d | 2026-02-02 | 71SS+10d |
| 82 |  | A56 Formalizar o aceite final e encerrar o projeto | 6d | 2026-02-02 | 71, 80, 89, 70, 81 |
| 83 | 1.8 | **1.8 Sistemas digitais da linha (frente ágil)** |  |  |  |
| 84 | 1.8.1 | **1.8.1 Release 1 (MVP)** |  |  |  |
| 85 |  | A57 Desenvolver até a Release 1 (MVP) — sprints 1 a 5 | 47d | 2026-02-02 | 3SS+60d |
| 86 | 1.8.2 | **1.8.2 Release 2** |  |  |  |
| 87 |  | A58 Desenvolver até a Release 2 — sprints 6 a 11 | 59d | 2026-02-02 | 85 |
| 88 | 1.8.3 | **1.8.3 Release 3** |  |  |  |
| 89 |  | A59 Desenvolver até a Release 3 — sprints 12 a 17 | 56d | 2026-02-02 | 87 |

## Version 2 (saved 2026-11-24, file cronograma_G7.pod)

Note of the change: ProjectLibre: arquivo .pod, Gantt e rede em PDF (enviados pelo Caique)

Last finish none → 2027-05-11. Complete tasks 0 → 39.

Added:

| ID | Task | Duration | Start | Finish |
| --- | --- | --- | --- | --- |
| 1 | **Linha de injeção e pintura de para-choques** | 313d | 2026-02-03 | 2027-05-11 |

Changed:

| ID | Task | Start | Finish | Duration | Complete | Other |
| --- | --- | --- | --- | --- | --- | --- |
| 2 | **1.1 Engenharia e licenças** | none → 2026-02-03 | none → 2026-05-11 | none → 65d | 0% → 100% | baseline start none → 2026-02-02; baseline finish none → 2026-05-01 |
| 3 | **1.1.1 Projeto básico** | none → 2026-02-03 | none → 2026-03-09 | none → 23d | 0% → 100% | baseline start none → 2026-02-02; baseline finish none → 2026-03-04 |
| 4 | A01 Elaborar o projeto básico e o layout da linha | 2026-02-02 → 2026-02-03 (+1d) | none → 2026-03-09 | 21d → 23d | 0% → 100% | baseline start none → 2026-02-02; baseline finish none → 2026-03-04 |
| 5 | **1.1.2 Projetos executivos** | none → 2026-03-10 | none → 2026-05-04 | none → 38d | 0% → 100% | baseline start none → 2026-03-05; baseline finish none → 2026-04-27 |
| 6 | A02 Elaborar o projeto executivo civil e de utilidades | 2026-02-02 → 2026-03-10 (+36d) | none → 2026-04-14 | 27d → 25d | 0% → 100% | baseline start none → 2026-03-05; baseline finish none → 2026-04-13 |
| 7 | A03 Elaborar o projeto executivo elétrico e de automação | 2026-02-02 → 2026-03-12 (+38d) | none → 2026-04-22 |  | 0% → 100% | baseline start none → 2026-03-05; baseline finish none → 2026-04-15 |
| 8 | A04 Compatibilizar os projetos e emitir para construção | 2026-02-02 → 2026-04-23 (+80d) | none → 2026-05-04 | 7d → 8d | 0% → 100% | baseline start none → 2026-04-16; baseline finish none → 2026-04-27 |
| 9 | **1.1.3 Licenças** | none → 2026-03-04 | none → 2026-05-11 | none → 46d | 0% → 100% | baseline start none → 2026-02-16; baseline finish none → 2026-05-01 |
| 10 | A05 Obter as licenças e aprovações (ambiental e bombeiros) | 2026-02-02 → 2026-03-04 (+30d) | none → 2026-05-11 | 51d → 46d | 0% → 100% | baseline start none → 2026-02-16; baseline finish none → 2026-05-01 |
| 11 | A06 Realizar a análise de risco NR-12 do projeto | 2026-02-02 → 2026-04-14 (+71d) | none → 2026-05-06 | 14d → 15d | 0% → 100% | baseline start none → 2026-03-23; baseline finish none → 2026-04-10 |
| 12 | **1.2 Equipamentos principais** | none → 2026-03-11 | none → 2026-12-04 | none → 183d | 0% → 97% | baseline start none → 2026-03-05; baseline finish none → 2026-11-19 |
| 13 | **1.2.1 Injetora de 3.200 t** | none → 2026-03-11 | none → 2026-12-04 | none → 183d | 0% → 94% | baseline start none → 2026-03-05; baseline finish none → 2026-11-19 |
| 14 | A07 Elaborar a especificação técnica: Injetora de 3.200 t | 2026-02-02 → 2026-03-11 (+37d) | none → 2026-03-23 |  | 0% → 100% | baseline start none → 2026-03-05; baseline finish none → 2026-03-17 |
| 15 | A08 Contratar o fornecimento: Injetora de 3.200 t | 2026-02-02 → 2026-03-26 (+52d) | none → 2026-04-07 | 8d → 9d | 0% → 100% | baseline start none → 2026-03-18; baseline finish none → 2026-03-27 |
| 16 | A09 Fabricar: Injetora de 3.200 t | 2026-02-02 → 2026-04-10 (+67d) | none → 2026-10-08 | 122d → 124d | 0% → 100% | baseline start none → 2026-03-30; baseline finish none → 2026-09-24 |
| 17 | A10 Aprovar os desenhos de fabricação e de bases: Injetora de 3.200 t | 2026-02-02 → 2026-04-10 (+67d) | none → 2026-04-27 |  | 0% → 100% | baseline start none → 2026-03-30; baseline finish none → 2026-04-14 |
| 18 | A11 Realizar o teste de aceite em fábrica (FAT): Injetora de 3.200 t | 2026-02-02 → 2026-10-09 (+249d) | none → 2026-10-19 |  | 0% → 100% | baseline start none → 2026-09-25; baseline finish none → 2026-10-02 |
| 19 | A12 Transportar e desembaraçar: Injetora de 3.200 t | 2026-02-02 → 2026-10-20 (+260d) | none → 2026-11-30 |  | 0% → 70% | baseline start none → 2026-10-05; baseline finish none → 2026-11-13 |
| 20 | A13 Receber e inspecionar na fábrica: Injetora de 3.200 t | 2026-02-02 → 2026-12-01 (+302d) | none → 2026-12-04 |  |  | baseline start none → 2026-11-16; baseline finish none → 2026-11-19 |
| 21 | **1.2.2 Cabine de pintura robotizada** | none → 2026-03-12 | none → 2026-10-06 | none → 142d | 0% → 100% | baseline start none → 2026-03-05; baseline finish none → 2026-10-05 |
| 22 | A14 Elaborar a especificação técnica: Cabine de pintura robotizada | 2026-02-02 → 2026-03-12 (+38d) | none → 2026-03-27 | 11d → 12d | 0% → 100% | baseline start none → 2026-03-05; baseline finish none → 2026-03-19 |
| 23 | A15 Contratar o fornecimento: Cabine de pintura robotizada | 2026-02-02 → 2026-03-30 (+56d) | none → 2026-04-13 | 9d → 10d | 0% → 100% | baseline start none → 2026-03-20; baseline finish none → 2026-04-01 |
| 24 | A16 Fabricar: Cabine de pintura robotizada | 2026-02-02 → 2026-04-16 (+73d) | none → 2026-09-09 | 108d → 100d | 0% → 100% | baseline start none → 2026-04-02; baseline finish none → 2026-09-08 |
| 25 | A17 Aprovar os desenhos de fabricação e de bases: Cabine de pintura robotizada | 2026-02-02 → 2026-04-14 (+71d) | none → 2026-04-30 | 11d → 12d | 0% → 100% | baseline start none → 2026-04-02; baseline finish none → 2026-04-17 |
| 26 | A18 Realizar o teste de aceite em fábrica (FAT): Cabine de pintura robotizada | 2026-02-02 → 2026-09-11 (+221d) | none → 2026-09-17 | 6d → 5d | 0% → 100% | baseline start none → 2026-09-09; baseline finish none → 2026-09-16 |
| 27 | A19 Transportar e descarregar: Cabine de pintura robotizada | 2026-02-02 → 2026-09-18 (+228d) | none → 2026-09-29 | 9d → 8d | 0% → 100% | baseline start none → 2026-09-17; baseline finish none → 2026-09-29 |
| 28 | A20 Receber e inspecionar na fábrica: Cabine de pintura robotizada | 2026-02-02 → 2026-10-01 (+241d) | none → 2026-10-06 |  | 0% → 100% | baseline start none → 2026-09-30; baseline finish none → 2026-10-05 |
| 29 | **1.2.3 Transportador aéreo e robôs de manipulação** | none → 2026-03-19 | none → 2026-09-22 | none → 127d | 0% → 100% | baseline start none → 2026-03-12; baseline finish none → 2026-08-10 |
| 30 | A21 Especificar e contratar: Transportador aéreo e robôs de manipulação | 2026-02-02 → 2026-03-19 (+45d) | none → 2026-04-17 | 19d → 21d | 0% → 100% | baseline start none → 2026-03-12; baseline finish none → 2026-04-07 |
| 31 | A22 Fabricar e entregar: Transportador aéreo e robôs de manipulação | 2026-02-02 → 2026-04-28 (+85d) | none → 2026-09-17 | 80d → 98d | 0% → 100% | baseline start none → 2026-04-08; baseline finish none → 2026-08-04 |
| 32 | A23 Receber e inspecionar na fábrica: Transportador aéreo e robôs de manipulação | 2026-02-02 → 2026-09-18 (+228d) | none → 2026-09-22 | 4d → 3d | 0% → 100% | baseline start none → 2026-08-05; baseline finish none → 2026-08-10 |
| 33 | **1.3 Obra civil e utilidades** | none → 2026-05-05 | none → 2026-09-11 | none → 90d | 0% → 100% | baseline start none → 2026-04-28; baseline finish none → 2026-07-30 |
| 34 | **1.3.1 Preparação da área** | none → 2026-05-05 | none → 2026-05-15 | none → 9d | 0% → 100% | baseline start none → 2026-04-28; baseline finish none → 2026-05-11 |
| 35 | A24 Mobilizar o canteiro e isolar a área em relação à Linha de painéis | 2026-02-02 → 2026-05-05 (+92d) | none → 2026-05-15 |  | 0% → 100% | baseline start none → 2026-04-28; baseline finish none → 2026-05-11 |
| 36 | **1.3.2 Bases e piso** | none → 2026-05-18 | none → 2026-09-11 | none → 81d | 0% → 100% | baseline start none → 2026-05-12; baseline finish none → 2026-07-30 |
| 37 | A25 Demolir o piso existente e escavar as bases | 2026-02-02 → 2026-05-18 (+105d) | none → 2026-06-01 |  | 0% → 100% | baseline start none → 2026-05-12; baseline finish none → 2026-05-26 |
| 38 | A26 Executar as bases dos equipamentos | 2026-02-02 → 2026-06-03 (+121d) | none → 2026-07-29 | 21d → 38d | 0% → 100% | baseline start none → 2026-05-27; baseline finish none → 2026-06-26 |
| 39 | A27 Executar o piso industrial e as canaletas | 2026-02-02 → 2026-08-03 (+182d) | none → 2026-09-11 | 23d → 29d | 0% → 100% | baseline start none → 2026-06-29; baseline finish none → 2026-07-30 |
| 40 | **1.3.3 Utilidades** | none → 2026-06-03 | none → 2026-08-20 | none → 54d | 0% → 100% | baseline start none → 2026-05-26; baseline finish none → 2026-07-29 |
| 41 | A28 Instalar as redes de utilidades: água gelada, ar comprimido e tratamento de efluentes | 2026-02-02 → 2026-06-03 (+121d) | none → 2026-08-11 | 38d → 47d | 0% → 100% | baseline start none → 2026-05-26; baseline finish none → 2026-07-21 |
| 42 | A29 Testar e liberar as redes de utilidades | 2026-02-02 → 2026-08-13 (+192d) | none → 2026-08-20 |  | 0% → 100% | baseline start none → 2026-07-22; baseline finish none → 2026-07-29 |
| 43 | **1.3.4 Adequação predial** | none → 2026-05-27 | none → 2026-07-09 | none → 29d | 0% → 100% | baseline start none → 2026-05-19; baseline finish none → 2026-06-24 |
| 44 | A30 Adequar o prédio (cobertura, exaustão e iluminação) | 2026-02-02 → 2026-05-27 (+114d) | none → 2026-07-09 | 26d → 29d | 0% → 100% | baseline start none → 2026-05-19; baseline finish none → 2026-06-24 |
| 45 | A31 Instalar a rede de combate a incêndio da área | 2026-02-02 → 2026-06-11 (+129d) | none → 2026-07-06 |  | 0% → 100% | baseline start none → 2026-05-29; baseline finish none → 2026-06-22 |
| 46 | **1.4 Elétrica e automação** | none → 2026-05-06 | none → 2026-11-09 | none → 128d | 0% → 96% | baseline start none → 2026-04-28; baseline finish none → 2026-09-23 |
| 47 | **1.4.1 Força** | none → 2026-05-06 | none → 2026-10-30 | none → 123d | 0% → 93% | baseline start none → 2026-04-28; baseline finish none → 2026-09-16 |
| 48 | A32 Fabricar e instalar os painéis de força e a subestação | 2026-02-02 → 2026-05-06 (+93d) | none → 2026-08-28 | 42d → 80d | 0% → 100% | baseline start none → 2026-04-28; baseline finish none → 2026-06-26 |
| 49 | A33 Instalar a infraestrutura elétrica e lançar os cabos | 2026-02-02 → 2026-09-14 (+224d) | none → 2026-10-23 |  | 0% → 90% | baseline start none → 2026-07-31; baseline finish none → 2026-09-09 |
| 50 | A34 Energizar os painéis e testar a alimentação | 2026-02-02 → 2026-10-26 (+266d) | none → 2026-10-30 |  |  | baseline start none → 2026-09-10; baseline finish none → 2026-09-16 |
| 51 | **1.4.2 Automação de campo** | none → 2026-05-08 | none → 2026-11-09 | none → 126d | 0% → 100% | baseline start none → 2026-05-01; baseline finish none → 2026-09-23 |
| 52 | A35 Instalar a instrumentação e a rede industrial | 2026-02-02 → 2026-09-29 (+239d) | none → 2026-11-09 |  | 0% → 100% | baseline start none → 2026-08-14; baseline finish none → 2026-09-23 |
| 53 | A36 Programar os CLPs e o supervisório | 2026-02-02 → 2026-05-08 (+95d) | none → 2026-07-28 | 42d → 55d | 0% → 100% | baseline start none → 2026-05-01; baseline finish none → 2026-07-02 |
| 54 | A37 Testar a lógica dos CLPs em bancada | 2026-02-02 → 2026-07-31 (+179d) | none → 2026-08-11 | 9d → 8d | 0% → 100% | baseline start none → 2026-07-03; baseline finish none → 2026-07-15 |
| 55 | **1.5 Montagem** | none → 2026-10-07 | none → 2027-02-23 | none → 93d | 0% → 21% | baseline start none → 2026-10-06; baseline finish none → 2027-02-05 |
| 56 | **1.5.1 Montagem mecânica** | none → 2026-10-07 | none → 2027-01-25 | none → 74d | 0% → 30% | baseline start none → 2026-10-06; baseline finish none → 2027-01-11 |
| 57 | A38 Montar: Injetora de 3.200 t | 2026-02-02 → 2026-12-07 (+308d) | none → 2027-01-14 |  |  | baseline start none → 2026-11-20; baseline finish none → 2026-12-30 |
| 58 | A39 Montar: Cabine de pintura robotizada | 2026-02-02 → 2026-10-07 (+247d) | none → 2026-11-10 | 24d → 23d | 0% → 100% | baseline start none → 2026-10-06; baseline finish none → 2026-11-10 |
| 59 | A40 Montar e interligar: Transportador aéreo e robôs de manipulação | 2026-02-02 → 2026-12-17 (+318d) | none → 2027-01-15 |  |  | baseline start none → 2026-12-03; baseline finish none → 2026-12-30 |
| 60 | A41 Alinhar e nivelar os equipamentos | 2026-02-02 → 2027-01-15 (+347d) | none → 2027-01-25 |  |  | baseline start none → 2026-12-31; baseline finish none → 2027-01-11 |
| 61 | **1.5.2 Interligações e segurança** | none → 2027-01-15 | none → 2027-02-23 | none → 26d |  | baseline start none → 2026-12-31; baseline finish none → 2027-02-05 |
| 62 | A42 Interligar eletricamente os equipamentos | 2026-02-02 → 2027-01-15 (+347d) | none → 2027-02-05 |  |  | baseline start none → 2026-12-31; baseline finish none → 2027-01-22 |
| 63 | A43 Instalar as proteções e adequar a linha à NR-12 | 2026-02-02 → 2027-01-26 (+358d) | none → 2027-02-15 |  |  | baseline start none → 2027-01-12; baseline finish none → 2027-01-28 |
| 64 | A44 Emitir o laudo de conformidade com a NR-12 | 2026-02-02 → 2027-02-16 (+379d) | none → 2027-02-23 |  |  | baseline start none → 2027-01-29; baseline finish none → 2027-02-05 |
| 65 | **1.6 Comissionamento e partida** | none → 2026-05-15 | none → 2027-05-03 | none → 239d | 0% → 18% | baseline start none → 2026-05-11; baseline finish none → 2027-04-16 |
| 66 | **1.6.1 Testes** | none → 2026-05-15 | none → 2027-03-31 | none → 217d | 0% → 32% | baseline start none → 2026-05-11; baseline finish none → 2027-03-16 |
| 67 | A45 Elaborar os procedimentos de comissionamento e partida | 2026-02-02 → 2026-05-15 (+102d) | none → 2026-06-01 | 11d → 12d | 0% → 100% | baseline start none → 2026-05-11; baseline finish none → 2026-05-25 |
| 68 | A46 Executar os testes a frio (sem produto) | 2026-02-02 → 2027-02-24 (+387d) | none → 2027-03-15 |  |  | baseline start none → 2027-02-08; baseline finish none → 2027-03-01 |
| 69 | A47 Executar o teste de aceite em campo (SAT) com produto | 2026-02-02 → 2027-03-16 (+407d) | none → 2027-03-31 |  |  | baseline start none → 2027-03-02; baseline finish none → 2027-03-16 |
| 70 | **1.6.2 Partida** | none → 2027-04-01 | none → 2027-05-03 | none → 22d |  | baseline start none → 2027-03-17; baseline finish none → 2027-04-16 |
| 71 | A48 Corrigir as pendências do teste de aceite | 2026-02-02 → 2027-04-01 (+423d) | none → 2027-04-13 |  |  | baseline start none → 2027-03-17; baseline finish none → 2027-03-29 |

| ID | Task | Start | Finish | Duration | Complete | Other |
| --- | --- | --- | --- | --- | --- | --- |
| 72 | A49 Conduzir a partida assistida e a curva de ramp-up | 2026-02-02 → 2027-04-01 (+423d) | none → 2027-05-03 |  |  | baseline start none → 2027-03-17; baseline finish none → 2027-04-16 |
| 73 | **1.7 Pessoas e transição** | none → 2026-04-14 | none → 2027-05-11 | none → 266d | 0% → 58% | baseline start none → 2026-04-02; baseline finish none → 2027-04-27 |
| 74 | **1.7.1 Pessoas** | none → 2026-05-08 | none → 2026-06-22 | none → 31d | 0% → 100% | baseline start none → 2026-05-04; baseline finish none → 2026-06-16 |
| 75 | A50 Recrutar e contratar os operadores da nova linha | 2026-02-02 → 2026-05-08 (+95d) | none → 2026-06-22 |  | 0% → 100% | baseline start none → 2026-05-04; baseline finish none → 2026-06-16 |
| 76 | **1.7.2 Treinamento** | none → 2026-04-14 | none → 2027-02-09 | none → 205d | 0% → 66% | baseline start none → 2026-04-02; baseline finish none → 2027-01-22 |
| 77 | A51 Elaborar o plano de treinamento e os materiais | 2026-02-02 → 2026-04-14 (+71d) | none → 2026-05-06 | 16d → 15d | 0% → 100% | baseline start none → 2026-04-02; baseline finish none → 2026-04-27 |
| 78 | A52 Elaborar os procedimentos operacionais padrão | 2026-02-02 → 2026-05-07 (+94d) | none → 2026-05-28 |  | 0% → 100% | baseline start none → 2026-04-28; baseline finish none → 2026-05-20 |
| 79 | A53 Treinar os operadores e a equipe de manutenção | 2026-02-02 → 2027-01-18 (+350d) | none → 2027-02-09 |  |  | baseline start none → 2026-12-31; baseline finish none → 2027-01-22 |
| 80 | **1.7.3 Encerramento** | none → 2027-02-24 | none → 2027-05-11 | none → 53d |  | baseline start none → 2027-02-08; baseline finish none → 2027-04-27 |
| 81 | A54 Organizar os sobressalentes, os planos de manutenção e o data book | 2026-02-02 → 2027-02-24 (+387d) | none → 2027-03-17 |  |  | baseline start none → 2027-02-08; baseline finish none → 2027-03-03 |
| 82 | A55 Registrar as lições aprendidas e desmobilizar o canteiro | 2026-02-02 → 2027-04-15 (+437d) | none → 2027-04-26 |  |  | baseline start none → 2027-03-31; baseline finish none → 2027-04-08 |
| 83 | A56 Formalizar o aceite final e encerrar o projeto | 2026-02-02 → 2027-05-04 (+456d) | none → 2027-05-11 |  |  | baseline start none → 2027-04-19; baseline finish none → 2027-04-27 |
| 84 | **1.8 Sistemas digitais da linha (frente ágil)** | none → 2026-05-04 | none → 2027-03-02 | none → 206d | 0% → 37% | baseline start none → 2026-05-01; baseline finish none → 2026-12-24 |
| 85 | **1.8.1 Release 1 (MVP)** | none → 2026-05-04 | none → 2026-08-07 | none → 67d | 0% → 100% | baseline start none → 2026-05-01; baseline finish none → 2026-07-10 |
| 86 | A57 Desenvolver até a Release 1 (MVP) — sprints 1 a 5 | 2026-02-02 → 2026-05-04 (+91d) | none → 2026-08-07 | 47d → 67d | 0% → 100% | baseline start none → 2026-05-01; baseline finish none → 2026-07-10 |
| 87 | **1.8.2 Release 2** | none → 2026-09-14 | none → 2026-12-08 | none → 59d |  | baseline start none → 2026-07-13; baseline finish none → 2026-10-02 |
| 88 | A58 Desenvolver até a Release 2 — sprints 6 a 11 | 2026-02-02 → 2026-09-14 (+224d) | none → 2026-12-08 |  |  | baseline start none → 2026-07-13; baseline finish none → 2026-10-02 |
| 89 | **1.8.3 Release 3** | none → 2026-12-09 | none → 2027-03-02 | none → 56d |  | baseline start none → 2026-10-05; baseline finish none → 2026-12-24 |
| 90 | A59 Desenvolver até a Release 3 — sprints 12 a 17 | 2026-02-02 → 2026-12-09 (+310d) | none → 2027-03-02 |  |  | baseline start none → 2026-10-05; baseline finish none → 2026-12-24 |
